# Gantt EMBLEM MAPFRE URUGUAY V3

Schedule from MS Project, 2017-12-18 to 2018-05-23, costs in $.

## Calendars

- Standard: Mon-Fri 08:00-12:00, 13:00-17:00; Sat-Sun off. Exceptions (off unless hours are given): 2018-01-01 (Enero), 2018-02-12 to 2018-02-13 (Canaval), 2018-03-29 to 2018-03-30 (Jueves y Viernes Santo.), 2018-04-02 (Día del Veterano y de los Caídos en la Guerra de Malvinas.), 2018-04-30 (Feriado puente turístico), 2018-05-01 (Día del trabajador.).

## Resources

| Resource | Rate |
| --- | --- |
| PL | 35 |
| OMINT |  |
| ANA1 |  |
| ANA2 |  |
| DISE |  |
| ARQ |  |
| P1 |  |
| P2 |  |
| P3 |  |
| QA |  |
| P4 |  |
| P5 |  |
| OMIT |  |

## Schedule

| ID | WBS | Task | Duration | Start | Finish | Predecessors | Total slack | Free slack | Constraint | Resources | Work | Cost |
| --- | --- | --- | --- | --- | --- | --- | --- | --- | --- | --- | --- | --- |
| 1 | 1 | **Implementacion STARTUP - VIDA - SCVO** | 105d | 2017-12-18 | 2018-05-23 |  | 0d |  |  |  | 3216h | 5,880 |
| 2 | 1.1 | Gestión y Seguimiento de proyecto | 72d | 2018-01-08 | 2018-04-24 |  | 19d |  | start no earlier than 2018-01-08 | PL [50%] | 288h | 10,080 |
| 3 | 1.2 | **Analisis** | 22d | 2017-12-18 | 2018-01-17 |  | 0d |  |  |  | 304h | -2,800 |
| 4 | 1.2.1 | Relevamiento inicial/Análisis (Doc. Alcance) | 3d | 2017-12-18 | 2017-12-20 |  | 0d |  | start no earlier than 2017-12-18 | ANA1; ANA2 | 48h |  |
| 5 | 1.2.2 | Aprobacion de alcance de proyecto y arquitectura (workshop) | 2d | 2017-12-21 | 2017-12-22 | 4 | 0d |  |  | OMINT | 16h |  |
| 6 | 1.2.3 | Construccion de CU de emision (poliza y endoso) | 5d | 2017-12-25 | 2017-12-29 | 5 | 0d |  |  | ANA1 | 40h |  |
| 7 | 1.2.4 | Construccion de CU de adm. Nomina | 4d | 2017-12-25 | 2017-12-28 | 5 | 91d | 0d |  | ANA2 | 32h |  |
| 8 | 1.2.5 | Construccion de CU de facturacion | 3d | 2017-12-29 | 2018-01-03 | 7 | 91d | 0d |  | ANA2 | 24h |  |
| 9 | 1.2.6 | Construccion de CU de cobranza | 2d | 2018-01-02 | 2018-01-03 | 6 | 0d |  |  | ANA1 | 16h |  |
| 10 | 1.2.7 | Construccion de CU de Siniestro | 3d | 2018-01-04 | 2018-01-08 | 9 | 0d |  |  | ANA1 | 24h |  |
| 11 | 1.2.8 | Construccion de CU de envios a la SSN y reportes | 2d | 2018-01-04 | 2018-01-05 | 8 | 91d |  |  | ANA2 | 16h |  |
| 12 | 1.2.9 | Aprobacion de Casos de uso | 1d | 2018-01-09 | 2018-01-09 | 10 | 0d |  |  | OMINT | 8h |  |
| 13 | 1.2.10 | Construccion de escenarios de testing de emision (poliza y endoso) | 2d | 2018-01-10 | 2018-01-11 | 12 | 85d | 0d |  | ANA1 | 16h |  |
| 14 | 1.2.11 | Construccion de escenarios de testing de adm. Nomina | 2d | 2018-01-10 | 2018-01-11 | 12 | 53d | 0d |  | ANA2 | 16h |  |
| 15 | 1.2.12 | Construccion de escenarios de testing de facturacion | 1d | 2018-01-12 | 2018-01-12 | 14 | 53d | 0d |  | ANA2 | 8h |  |
| 16 | 1.2.13 | Construccion de escenarios de testing de cobranza | 1d | 2018-01-12 | 2018-01-12 | 13 | 85d | 0d |  | ANA1 | 8h |  |
| 17 | 1.2.14 | Construccion de escenarios de testing de Siniestro | 1d | 2018-01-15 | 2018-01-15 | 16 | 85d |  |  | ANA1 | 8h |  |
| 18 | 1.2.15 | Construccion de escenarios de testing de envios a la SSNy reportes | 2d | 2018-01-15 | 2018-01-16 | 15 | 53d | 0d |  | ANA2 | 16h |  |
| 19 | 1.2.16 | Aprobacion de escenarios de testing | 1d | 2018-01-17 | 2018-01-17 | 18 | 53d | 0d |  | OMINT | 8h |  |
| 20 | 1.3 | **Diseño** | 7d | 2017-12-21 | 2017-12-29 |  | 95d |  |  |  | 80h |  |
| 21 | 1.3.1 | Look && Feel | 3d | 2017-12-21 | 2017-12-25 | 4 | 99d |  |  | DISE | 24h |  |
| 22 | 1.3.2 | Arquitectura de app | 3d | 2017-12-21 | 2017-12-25 | 4 | 95d | 0d |  | ARQ | 24h |  |
| 23 | 1.3.3 | Diseño y reingenieria de Base de datos | 3d | 2017-12-26 | 2017-12-28 | 22 | 95d | 0d |  | ARQ | 24h |  |
| 24 | 1.3.4 | Configuracion de la solucion (VS. TFS, usuarios, etc.) | 1d | 2017-12-29 | 2017-12-29 | 23 | 95d |  |  | ARQ | 8h |  |

| ID | WBS | Task | Duration | Start | Finish | Predecessors | Total slack | Free slack | Constraint | Resources | Work | Cost | Text3 |
| --- | --- | --- | --- | --- | --- | --- | --- | --- | --- | --- | --- | --- | --- |
| 25 | 1.4 | **Desarrollo** | 89d | 2018-01-10 | 2018-05-23 |  | 0d |  |  |  | 2544h | -1,400 |  |
| 26 | 1.4.1 | **Etapa 1** | 45d | 2018-01-10 | 2018-03-15 |  | 0d |  |  |  | 1408h | -1,400 |  |
| 27 | 1.4.1.1 | **Emision de poliza - Multi-Compania** | 33d | 2018-01-10 | 2018-02-27 |  | 0d |  |  |  | 264h |  |  |
| 28 | 1.4.1.1.1 | Configuracion del producto (coberturas, primas, calculos, comisiones, etc.) | 4d | 2018-01-10 | 2018-01-15 | 12 | 0d |  |  | P1 | 32h |  |  |
| 29 | 1.4.1.1.2 | Pantalla consulta de poliza | 2d | 2018-01-16 | 2018-01-17 | 28 | 0d |  |  | P1 | 16h |  | 24 |
| 30 | 1.4.1.1.3 | Pantalla registracion de nueva poliza | 7d | 2018-01-18 | 2018-01-26 | 29 | 0d |  |  | P1 | 56h |  | 32 |
| 31 | 1.4.1.1.4 | Pantalla de endoso para modificar la poliza | 2d | 2018-01-29 | 2018-01-30 | 30 | 0d |  |  | P1 | 16h |  |  |
| 32 | 1.4.1.1.5 | Pantalla de consulta de endosos | 2d | 2018-01-31 | 2018-02-01 | 31 | 0d |  |  | P1 | 16h |  | 32 |
| 33 | 1.4.1.1.6 | Impresión de poliza nueva/ mensual por facturacion / certificados de cobertura | 8d | 2018-02-02 | 2018-02-15 | 32 | 0d |  |  | P1 | 64h |  |  |
| 34 | 1.4.1.1.7 | Pantalla de Estructura Comercial | 2d | 2018-02-16 | 2018-02-19 | 33 | 0d |  |  | P1 | 16h |  | 64 |
| 35 | 1.4.1.1.8 | Testing unitario | 6d | 2018-02-20 | 2018-02-27 | 34 | 0d |  |  | P1 | 48h |  |  |
| 36 | 1.4.1.2 | **Facturacion de productos - Multi-Compania** | 21d | 2018-01-10 | 2018-02-07 |  | 53d |  |  |  | 168h |  |  |
| 37 | 1.4.1.2.1 | Capa de integración para recepcion de productos a facturar | 4d | 2018-01-10 | 2018-01-15 | 12 | 53d | 0d |  | P3 | 32h |  |  |
| 38 | 1.4.1.2.2 | Pantalla Generacion de cuota mensual + Calculo de formulas | 8d | 2018-01-16 | 2018-01-25 | 37 | 53d | 0d |  | P3 | 64h |  | 32 |
| 39 | 1.4.1.2.3 | Pantalla Administracion de envios a LOGIC | 2d | 2018-01-26 | 2018-01-29 | 38 | 53d | 0d |  | P3 | 16h |  | 32 |
| 40 | 1.4.1.2.4 | Notificacion al modulo de Integracion con LOGIC | 2d | 2018-01-30 | 2018-01-31 | 39 | 53d | 0d |  | P3 | 16h |  |  |
| 41 | 1.4.1.2.5 | Testing unitario | 5d | 2018-02-01 | 2018-02-07 | 40 | 53d | 0d |  | P3 | 40h |  |  |
| 42 | 1.4.1.3 | **Cobranza de productos - Multi-Compania** | 12d | 2018-02-08 | 2018-02-27 |  | 53d |  |  |  | 96h |  |  |
| 43 | 1.4.1.3.1 | Capa de integración para recepcion de productos a cobrar | 4d | 2018-02-08 | 2018-02-15 | 41 | 53d | 0d | start no earlier than 2018-02-07 | P3 | 32h |  |  |
| 44 | 1.4.1.3.2 | Proceso batch para archivo de transferencia + calculo de comisiones | 4d | 2018-02-16 | 2018-02-21 | 43 | 53d | 0d |  | P3 | 32h |  | 24 |
| 45 | 1.4.1.3.3 | Notificacion al modulo de Integracion con LOGIC | 2d | 2018-02-22 | 2018-02-23 | 44 | 53d | 0d |  | P3 | 16h |  |  |
| 46 | 1.4.1.3.4 | Testing unitario | 2d | 2018-02-26 | 2018-02-27 | 45 | 53d | 0d |  | P3 | 16h |  |  |
| 47 | 1.4.1.4 | **Adm. Nomina - Vida** | 9d | 2018-01-10 | 2018-01-22 |  | 54d |  |  |  | 72h |  |  |
| 48 | 1.4.1.4.1 | Pantalla consulta de nomina | 2d | 2018-01-10 | 2018-01-11 | 12 | 54d | 0d |  | P2 | 16h |  | 32 |
| 49 | 1.4.1.4.2 | Procesamiento de DDJJ | 5d | 2018-01-12 | 2018-01-18 | 48 | 54d | 0d |  | P2 | 40h |  | 24 |
| 50 | 1.4.1.4.3 | Testing unitario | 2d | 2018-01-19 | 2018-01-22 | 49 | 54d | 0d |  | P2 | 16h |  |  |

| ID | WBS | Task | Type | Duration | Start | Finish | Predecessors | Total slack | Free slack | Resources | Work | Cost | Text3 |
| --- | --- | --- | --- | --- | --- | --- | --- | --- | --- | --- | --- | --- | --- |
| 51 | 1.4.1.5 | **Envios a la SSN - Vida** |  | 13d | 2018-01-23 | 2018-02-08 |  | 54d |  |  | 104h |  |  |
| 52 | 1.4.1.5.1 | Envio de archivos (kausay) |  | 4d | 2018-01-23 | 2018-01-26 | 50 | 54d | 0d | P2 | 32h |  |  |
| 53 | 1.4.1.5.2 | Procesamiento de respuestas (kausay) |  | 3d | 2018-01-29 | 2018-01-31 | 52 | 54d | 0d | P2 | 24h |  | 16 |
| 54 | 1.4.1.5.3 | Pantalla Generación de envíos SSN |  | 2d | 2018-02-01 | 2018-02-02 | 53 | 54d | 0d | P2 | 16h |  | 32 |
| 55 | 1.4.1.5.4 | Pantalla Administración de envíos a SSN |  | 2d | 2018-02-05 | 2018-02-06 | 54 | 54d | 0d | P2 | 16h |  | 48 |
| 56 | 1.4.1.5.5 | Testing unitario |  | 2d | 2018-02-07 | 2018-02-08 | 55 | 54d | 0d | P2 | 16h |  |  |
| 57 | 1.4.1.6 | **Integracion con LOGIC - Multi-Compania** |  | 13d | 2018-02-09 | 2018-03-01 |  | 54d |  |  | 104h |  |  |
| 58 | 1.4.1.6.1 | WS de Conectividad con otros sistemas (facturacion, pagos y polizas) |  | 6d | 2018-02-09 | 2018-02-20 | 56 | 54d | 0d | P2 | 48h |  |  |
| 59 | 1.4.1.6.2 | Conectividad con Logic |  | 2d | 2018-02-21 | 2018-02-22 | 58 | 54d | 0d | P2 | 16h |  |  |
| 60 | 1.4.1.6.3 | Envios de pagos y cobranzas a Logic |  | 2d | 2018-02-23 | 2018-02-26 | 59 | 54d | 0d | P2 | 16h |  | 32 |
| 61 | 1.4.1.6.4 | Testing unitario |  | 3d | 2018-02-27 | 2018-03-01 | 60 | 54d |  | P2 | 24h |  |  |
| 62 | 1.4.1.7 | **Funcionalidad General -Vida** |  | 3d | 2018-02-28 | 2018-03-02 |  | 53d |  |  | 24h |  |  |
| 63 | 1.4.1.7.1 | Pantalla de consulta de procesos y ejecucion manual |  | 2d | 2018-02-28 | 2018-03-01 | 46 | 53d | 0d | P3 | 16h |  | 32 |
| 64 | 1.4.1.7.2 | Pantalla ABM usuarios |  | 1d | 2018-03-02 | 2018-03-02 | 63 | 53d |  | P3 | 8h |  | 32 |
| 65 | 1.4.1.8 | Seguimiento de desarrollo y gestion de dudas con usuarios |  | 30d | 2018-01-18 | 2018-03-02 | 19 | 53d |  | ANA1 | 240h |  |  |
| 66 | 1.4.1.9 | **UAT - Etapa 1** |  | 10d | 2018-02-28 | 2018-03-13 |  | 0d |  |  | 312h |  |  |
| 67 | 1.4.1.9.1 | Armado ambiente de UAT |  | 2d | 2018-02-28 | 2018-03-01 | 35 | 0d |  | ARQ | 16h |  |  |
| 68 | 1.4.1.9.2 | Testing integral |  | 4d | 2018-03-02 | 2018-03-07 | 67 | 0d |  | ANA1; QA | 64h |  |  |
| 69 | 1.4.1.9.3 | Ajustes al testing QA EDSA |  | 4d | 2018-03-02 | 2018-03-07 | 67 | 50d |  | P1; P2; P3 | 96h |  |  |
| 70 | 1.4.1.9.4 | Inducción Usuarios OMINT (In-Situ) |  | 1d | 2018-03-08 | 2018-03-08 | 68 | 0d |  | ANA1; OMINT | 16h |  |  |
| 71 | 1.4.1.9.5 | Testing usuarios OMINT |  | 3d | 2018-03-09 | 2018-03-13 | 70 | 46d |  | OMINT | 24h |  |  |
| 72 | 1.4.1.9.6 | Acompañamiento en testing (In-Situ) |  | 3d | 2018-03-09 | 2018-03-13 | 70 | 46d |  | ANA1 | 24h |  |  |
| 73 | 1.4.1.9.7 | Ajustes al Testing OMINT |  | 3d | 2018-03-09 | 2018-03-13 | 70 | 0d |  | P1; P2; P3 | 72h |  |  |
| 74 | 1.4.1.10 | **PRODUCCION - Etapa 1** |  | 2d | 2018-03-13 | 2018-03-15 |  | 0d |  |  | 24h | -1,400 |  |
| 75 | 1.4.1.10.1 | Aprobación OMINT (pasaje a producción) | milestone | 0d | 2018-03-13 | 2018-03-13 | 73 | 0d |  | OMINT |  | -1,400 |  |
| 76 | 1.4.1.10.2 | Construir plan de release |  | 1d | 2018-03-14 | 2018-03-14 | 75 | 0d |  | ARQ | 8h |  |  |
| 77 | 1.4.1.10.3 | Deploy ambiente producción OMINT |  | 0.5d | 2018-03-15 | 2018-03-15 | 76 | 0d |  | ARQ | 4h |  |  |
| 78 | 1.4.1.10.4 | Prueba de humo |  | 0.5d | 2018-03-15 | 2018-03-15 | 77 | 0d |  | ANA1; ANA2; OMINT | 12h |  |  |
| 79 | 1.4.1.10.5 | Aprobación Puesta en Producción | milestone | 0d | 2018-03-15 | 2018-03-15 | 78 | 0d |  | OMINT |  |  |  |

| ID | WBS | Task | Duration | Start | Finish | Predecessors | Total slack | Free slack | Resources | Work | Text3 |
| --- | --- | --- | --- | --- | --- | --- | --- | --- | --- | --- | --- |
| 80 | 1.4.2 | **Etapa 2** | 25d | 2018-03-16 | 2018-04-24 |  | 0d |  |  | 776h |  |
| 81 | 1.4.2.1 | **Adm. Nomina - Vida** | 8d | 2018-03-16 | 2018-03-27 |  | 0d |  |  | 64h |  |
| 82 | 1.4.2.1.1 | Importacion nomina inicial | 2d | 2018-03-16 | 2018-03-19 | 79 | 0d |  | P2 | 16h | 32 |
| 83 | 1.4.2.1.2 | Pantalla registracion manual de nomina | 2d | 2018-03-20 | 2018-03-21 | 82 | 0d |  | P2 | 16h | 40 |
| 84 | 1.4.2.1.3 | Procesamiento de CAT | 2d | 2018-03-22 | 2018-03-23 | 83 | 0d |  | P2 | 16h | 24 |
| 85 | 1.4.2.1.4 | Testing unitario | 2d | 2018-03-26 | 2018-03-27 | 84 | 0d |  | P2 | 16h |  |
| 86 | 1.4.2.2 | **Siniestro - Vida** | 16d | 2018-03-16 | 2018-04-11 |  | 28d |  |  | 128h |  |
| 87 | 1.4.2.2.1 | Pantalla de consulta de siniestros | 2d | 2018-03-16 | 2018-03-19 | 79 | 28d | 0d | P1 | 16h | 32 |
| 88 | 1.4.2.2.2 | Pantalla de gestion de siniestros | 8d | 2018-03-20 | 2018-04-03 | 87 | 28d | 0d | P1 | 64h |  |
| 89 | 1.4.2.2.3 | Pantalla de apertura y cierre de siniestros | 2d | 2018-04-04 | 2018-04-05 | 88 | 28d | 0d | P1 | 16h | 40 |
| 90 | 1.4.2.2.4 | Testing unitario | 4d | 2018-04-06 | 2018-04-11 | 89 | 28d |  | P1 | 32h |  |
| 91 | 1.4.2.3 | **Envios a la SSN y reportes - Vida** | 16d | 2018-03-16 | 2018-04-11 |  | 8d |  |  | 208h |  |
| 92 | 1.4.2.3.1 | Registro de Emisión | 3d | 2018-03-16 | 2018-03-20 | 79 | 30d | 0d | P3 | 24h |  |
| 93 | 1.4.2.3.2 | Registro de Anulaciones | 4d | 2018-03-21 | 2018-03-26 | 92 | 30d | 0d | P3 | 32h |  |
| 94 | 1.4.2.3.3 | Registro de Siniestros Denunciados | 4d | 2018-03-27 | 2018-04-04 | 93 | 30d | 0d | P3 | 32h |  |
| 95 | 1.4.2.3.4 | Registro de Pólizas Cobradas | 3d | 2018-04-05 | 2018-04-09 | 94 | 30d |  | P3 | 24h |  |
| 96 | 1.4.2.3.5 | Registro de Siniestros Pagados | 4d | 2018-03-28 | 2018-04-05 | 85 | 0d |  | P2 | 32h |  |
| 97 | 1.4.2.3.6 | Testing unitario | 4d | 2018-04-06 | 2018-04-11 | 96 | 0d |  | P2; P3 | 64h |  |
| 98 | 1.4.2.4 | Seguimiento de desarrollo y gestion de dudas con usuarios | 16d | 2018-03-16 | 2018-04-11 | 79 | 28d |  | ANA1 | 128h |  |
| 99 | 1.4.2.5 | **UAT - Etapa 2** | 7d | 2018-04-12 | 2018-04-20 |  | 0d |  |  | 224h |  |
| 100 | 1.4.2.5.1 | Armado ambiente de UAT | 1d | 2018-04-12 | 2018-04-12 | 97 | 0d |  | ARQ | 8h |  |
| 101 | 1.4.2.5.2 | Testing integral | 3d | 2018-04-13 | 2018-04-17 | 100 | 24d |  | ANA1; QA | 48h |  |
| 102 | 1.4.2.5.3 | Ajustes al testing QA EDSA | 3d | 2018-04-13 | 2018-04-17 | 100 | 0d |  | P1; P2; P3 | 72h |  |
| 103 | 1.4.2.5.4 | Inducción Usuarios OMINT (In-Situ) | 1d | 2018-04-18 | 2018-04-18 | 102 | 0d |  | ANA1; OMINT | 16h |  |
| 104 | 1.4.2.5.5 | Testing usuarios OMINT | 2d | 2018-04-19 | 2018-04-20 | 103 | 21d |  | OMINT | 16h |  |
| 105 | 1.4.2.5.6 | Acompañamiento en testing (In-Situ) | 2d | 2018-04-19 | 2018-04-20 | 103 | 21d |  | ANA1 | 16h |  |
| 106 | 1.4.2.5.7 | Ajustes al Testing OMINT | 2d | 2018-04-19 | 2018-04-20 | 103 | 0d |  | P1; P2; P3 | 48h |  |

| ID | WBS | Task | Type | Duration | Start | Finish | Predecessors | Total slack | Free slack | Constraint | Resources | Work | Text3 |
| --- | --- | --- | --- | --- | --- | --- | --- | --- | --- | --- | --- | --- | --- |
| 107 | 1.4.2.6 | **PRODUCCION - Etapa 2** |  | 2d | 2018-04-20 | 2018-04-24 |  | 0d |  |  |  | 24h |  |
| 108 | 1.4.2.6.1 | Aprobación OMINT (pasaje a producción) | milestone | 0d | 2018-04-20 | 2018-04-20 | 106 | 0d |  |  | OMINT |  |  |
| 109 | 1.4.2.6.2 | Construir plan de release |  | 1d | 2018-04-23 | 2018-04-23 | 108 | 0d |  |  | ARQ | 8h |  |
| 110 | 1.4.2.6.3 | Deploy ambiente producción OMINT |  | 0.5d | 2018-04-24 | 2018-04-24 | 109 | 0d |  |  | ARQ | 4h |  |
| 111 | 1.4.2.6.4 | Prueba de humo |  | 0.5d | 2018-04-24 | 2018-04-24 | 110 | 0d |  |  | ANA1; ANA2; OMINT | 12h |  |
| 112 | 1.4.2.6.5 | Aprobación Puesta en Producción | milestone | 0d | 2018-04-24 | 2018-04-24 | 111 | 0d |  |  | OMINT |  |  |
| 113 | 1.4.3 | **Etapa 3** |  | 19d | 2018-04-25 | 2018-05-23 |  | 0d |  |  |  | 360h |  |
| 114 | 1.4.3.1 | **Integracion con CRM - Multi-Compania** |  | 13d | 2018-04-25 | 2018-05-15 |  | 6d |  |  |  | 104h |  |
| 115 | 1.4.3.1.1 | WS de Conectividad con otros sistemas (siniestros, clientes y nomina) |  | 6d | 2018-04-25 | 2018-05-04 | 112 | 6d | 0d | start no earlier than 2018-02-09 | P1 | 48h |  |
| 116 | 1.4.3.1.2 | Conectividad con CRM |  | 2d | 2018-05-07 | 2018-05-08 | 115 | 6d | 0d | start no earlier than 2018-02-21 | P1 | 16h |  |
| 117 | 1.4.3.1.3 | Envios de informacion a CRM |  | 2d | 2018-05-09 | 2018-05-10 | 116 | 6d | 0d | start no earlier than 2018-02-23 | P1 | 16h | 32 |
| 118 | 1.4.3.1.4 | Testing unitario |  | 3d | 2018-05-11 | 2018-05-15 | 117 | 6d |  | start no earlier than 2018-02-27 | P1 | 24h |  |
| 119 | 1.4.3.2 | Seguimiento de desarrollo y gestion de dudas con usuarios |  | 13d | 2018-04-25 | 2018-05-15 | 112 | 0d |  | start no earlier than 2018-03-16 | ANA1 | 104h |  |
| 120 | 1.4.3.3 | **UAT - Etapa 3** |  | 5d | 2018-05-16 | 2018-05-22 |  | 0d |  |  |  | 144h |  |
| 121 | 1.4.3.3.1 | Armado ambiente de UAT |  | 1d | 2018-05-16 | 2018-05-16 | 119 | 0d |  |  | ARQ | 8h |  |
| 122 | 1.4.3.3.2 | Testing integral |  | 1d | 2018-05-17 | 2018-05-17 | 121 | 4d |  |  | ANA1; QA | 16h |  |
| 123 | 1.4.3.3.3 | Ajustes al testing QA EDSA |  | 1d | 2018-05-17 | 2018-05-17 | 121 | 0d |  |  | P1; P2; P3 | 24h |  |
| 124 | 1.4.3.3.4 | Inducción Usuarios OMINT (In-Situ) |  | 1d | 2018-05-18 | 2018-05-18 | 123 | 0d |  |  | ANA1; OMINT | 16h |  |
| 125 | 1.4.3.3.5 | Testing usuarios OMINT |  | 2d | 2018-05-21 | 2018-05-22 | 124 | 1d |  |  | OMINT | 16h |  |
| 126 | 1.4.3.3.6 | Acompañamiento en testing (In-Situ) |  | 2d | 2018-05-21 | 2018-05-22 | 124 | 1d |  |  | ANA1 | 16h |  |
| 127 | 1.4.3.3.7 | Ajustes al Testing OMINT |  | 2d | 2018-05-21 | 2018-05-22 | 124 | 0d |  |  | P1; P2; P3 | 48h |  |
| 128 | 1.4.3.4 | **PRODUCCION - Etapa 3** |  | 1d | 2018-05-22 | 2018-05-23 |  | 0d |  |  |  | 8h |  |
| 129 | 1.4.3.4.1 | Aprobación OMINT (pasaje a producción) | milestone | 0d | 2018-05-22 | 2018-05-22 | 127 | 0d |  |  | OMINT |  |  |
| 130 | 1.4.3.4.2 | Construir plan de release |  | 0.5d | 2018-05-23 | 2018-05-23 | 129 | 0d |  |  | ARQ | 4h |  |
| 131 | 1.4.3.4.3 | Deploy ambiente producción OMINT |  | 0.5d | 2018-05-23 | 2018-05-23 | 130 | 0d |  |  | ARQ | 4h |  |
| 132 | 1.4.3.4.4 | Prueba de humo | milestone | 0d | 2018-05-23 | 2018-05-23 | 131 | 0d |  |  | ANA1; ANA2; OMINT |  |  |
| 133 | 1.4.3.4.5 | Aprobación Puesta en Producción | milestone | 0d | 2018-05-23 | 2018-05-23 | 132 | 0d |  |  | OMINT |  |  |
